# DNS1

How a schedule from MS Project changed from version to version. A marks actual dates.

## Version 1 (saved 2026-10-30, file DNS.mpp)

Note of the change: YP

| ID | WBS | Task | Duration | Start | Finish | Predecessors | Total float | Constraint |
| --- | --- | --- | --- | --- | --- | --- | --- | --- |
| 1 |  | Начало проекта | 0d | 2026-10-05 | 2026-10-05 |  | 0d |  |
| 2 | 2 | **Анализ и сбор требований** | 25d | 2026-10-05 | 2026-11-09 |  | 0d |  |
| 3 |  | Встреча с заказчиком | 1d | 2026-10-05 | 2026-10-05 | 1 | 0d |  |
| 4 |  | Написание документа требований | 10d | 2026-10-06 | 2026-10-19 | 3 | 0d |  |
| 5 |  | Тестирование требований | 3d | 2026-10-20 | 2026-10-22 | 4 | 0d |  |
| 6 |  | Встреча с заказчиком | 1d | 2026-10-27 | 2026-10-27 | 5FS+2d | 0d |  |
| 7 |  | Подготовка договора и устава проекта | 4d | 2026-10-28 | 2026-11-02 | 6 | 0d |  |
| 8 |  | Согласование договора | 2d | 2026-11-03 | 2026-11-04 | 7 | 2d |  |
| 9 |  | Согласование устава проекта | 4d | 2026-11-03 | 2026-11-09 | 7 | 0d |  |
| 10 |  | Утверждение договора и устава проекта | 0d | 2026-11-09 | 2026-11-09 | 8, 9 | 0d |  |
| 11 | 3 | **Проектирование решения** | 135.83d | 2026-11-09 | 2027-05-26 |  | 0d |  |
| 12 |  | Написание и согласование ТЗ | 15d | 2026-11-09 | 2026-11-30 | 10 | 0d |  |
| 13 |  | Утверждение ТЗ | 0d | 2026-11-30 | 2026-11-30 | 12 | 0d |  |
| 14 |  | Обучение специалистов предметной облвсти | 13.33d | 2026-11-30 | 2026-12-17 | 13 | 92.5d |  |
| 15 |  | Проектирование архитектуры решения | 10d | 2026-12-17 | 2027-01-04 | 14 | 92.5d |  |
| 16 |  | Тестирование архитектуры решения | 5d | 2027-05-19 | 2027-05-26 | 15 | 0d | as late as possible |
| 17 |  | Установка средств разработки и тестирования | 8d | 2026-11-30 | 2026-12-10 | 13 | 112.83d |  |
| 18 |  | Написание тест-плана и вариантов тестирования системы | 12d | 2026-11-30 | 2026-12-16 | 13 | 0d |  |
| 19 |  | Встреча с заказчиком | 2.5d | 2026-12-16 | 2026-12-18 | 18 | 0d |  |
| 20 | 4 | **Разработка и внутреннее тестирование** | 77d | 2026-12-18 | 2027-04-12 |  | 0d |  |
| 21 |  | Встреча разработчиков, декомпозиция задачб назначение ответственных | 2d | 2026-12-18 | 2026-12-22 | 19 | 0d |  |
| 22 |  | Программирование | 45d | 2026-12-22 | 2027-02-26 | 21 | 0d |  |
| 23 |  | Улучшение кода | 11d | 2027-03-01 | 2027-03-16 | 22 | 0d |  |
| 24 |  | Встреча разработчиков для предварительной демонстрации | 1d | 2027-03-17 | 2027-03-17 | 23 | 0d |  |
| 25 |  | Демонстрация заказчику | 1d | 2027-03-18 | 2027-03-18 | 24 | 0d |  |
| 26 |  | Первая установка решения в среду тестирования | 5d | 2027-03-19 | 2027-03-25 | 25 | 0d |  |
| 27 |  | Прохождение тест-кейсов | 12d | 2027-03-26 | 2027-04-12 | 26 | 0d |  |
| 28 |  | Внутренее тестирование | 0d | 2027-04-12 | 2027-04-12 | 27 | 0d |  |
| 29 | 5 | **Тестирование на стороне заказчика** | 16d | 2027-04-13 | 2027-05-05 |  | 0d |  |
| 30 |  | Первая установка в тестовую среду заказчика | 2d | 2027-04-13 | 2027-04-14 | 28 | 0d |  |
| 31 |  | Поставки бета-версий | 4d | 2027-04-15 | 2027-04-20 | 30 | 0d |  |
| 32 |  | Доработка и исправление неисправностей | 10d | 2027-04-21 | 2027-05-05 | 31 | 0d |  |
| 33 |  | Прохождение тестирования на стороне заказчика | 0d | 2027-05-05 | 2027-05-05 | 32 | 0d |  |
| 34 | 6 | **Внедрение** | 13.33d | 2027-05-06 | 2027-05-26 |  | 0d |  |
| 35 |  | Установка на рабочий сервер | 3d | 2027-05-06 | 2027-05-12 | 33 | 10.33d |  |
| 36 |  | Написание инструкций | 10d | 2027-05-06 | 2027-05-21 | 33 | 3.33d |  |
| 37 |  | Обучение пользователей | 3.33d | 2027-05-21 | 2027-05-26 | 33 | 0d |  |
| 38 |  | Завершение внедрения | 0d | 2027-05-26 | 2027-05-26 | 35, 36, 37 | 0d |  |
| 39 |  | Конец проекта | 0d | 2027-05-26 | 2027-05-26 | 38 | 0d |  |

## Version 2 (saved 2026-10-30, file по_задаче.mpp)

Note of the change: YP

Last finish stays 2027-05-26.

Changed:

| ID | Task | Start | Duration | Complete |
| --- | --- | --- | --- | --- |
| 20 | **Разработка и внутреннее тестирование** | 2026-12-18 A |  | 0% → 3% |
| 22 | Программирование | 2026-12-22 A | 45d → 44.75d | 0% → 5% |

## Version 3 (saved 2026-10-30, file по_ресурсу.mpp)

Note of the change: Auto-merge from 7sem

Last finish stays 2027-05-26.

Changed:

| ID | Task | Start | Duration | Complete | Total float |
| --- | --- | --- | --- | --- | --- |
| 20 | **Разработка и внутреннее тестирование** | 2026-12-18 A → 2026-12-18 |  | 3% → 0% | 0d → 0.51d |
| 22 | Программирование | 2026-12-22 A → 2026-12-22 | 44.75d → 45d | 5% → 0% | 0d → 0.51d |
| 29 | **Тестирование на стороне заказчика** | 2027-04-13 A |  | 0% → 6% |  |
| 30 | Первая установка в тестовую среду заказчика | 2027-04-13 A |  | 0% → 51% |  |

## Version 4 (data date 2027-04-30, saved 2026-10-30, file факт.mpp)

Note of the change: Auto-merge from 7sem

Last finish stays 2027-05-26.

Changed:

| ID | Task | Start | Finish | Duration | Complete | Total float |
| --- | --- | --- | --- | --- | --- | --- |
| 11 | **Проектирование решения** | 2026-11-09 A |  |  | 0% → 3% |  |
| 15 | Проектирование архитектуры решения | 2026-12-17 A | 2027-01-04 → 2027-01-05 (+1d) | 10d → 11d | 0% → 18% | 92.5d → 91.5d |
| 29 | **Тестирование на стороне заказчика** | 2027-04-13 A → 2027-04-13 |  |  | 6% → 0% |  |
| 30 | Первая установка в тестовую среду заказчика | 2027-04-13 A → 2027-04-13 |  |  | 51% → 0% |  |

## Version 5 (saved 2026-10-30, file процент.mpp)

Note of the change: Merge branch 'main' into 2sem

Last finish stays 2027-05-26. Complete tasks 0 → 1.

Changed:

| ID | Task | Start | Finish | Duration | Complete | Total float |
| --- | --- | --- | --- | --- | --- | --- |
| 2 | **Анализ и сбор требований** | 2026-10-05 A |  |  | 0% → 31% |  |
| 3 | Встреча с заказчиком | 2026-10-05 A | 2026-10-05 A |  | 0% → 100% | 0d → none |
| 4 | Написание документа требований | 2026-10-06 A |  |  | 0% → 60% |  |
| 5 | Тестирование требований | 2026-10-20 A |  |  | 0% → 25% |  |
| 11 | **Проектирование решения** | 2026-11-09 A → 2026-11-09 |  |  | 3% → 0% |  |
| 15 | Проектирование архитектуры решения | 2026-12-17 A → 2026-12-17 | 2027-01-05 → 2027-01-04 (-1d) | 11d → 10d | 18% → 0% | 91.5d → 92.5d |
